# plan trabajo trecer sprint

Schedule from MS Project, 2018-05-21 to 2018-06-05.

## Calendars

- Estándar: Mon-Fri 09:00-13:00, 15:00-19:00; Sat-Sun off.

## Resources

| Resource |
| --- |
| Diana Salazar |
| Christian Badillo |
| Recurso 2 |
| Iván Ismael |

## Schedule

| ID | WBS | Task | Type | Duration | Start | Finish | Predecessors | Total slack | Free slack | Constraint | Resources | Work | Análisis | Desarrollo | Pruebas de desarrollo | Pruebas de integración | Despliegue |
| --- | --- | --- | --- | --- | --- | --- | --- | --- | --- | --- | --- | --- | --- | --- | --- | --- | --- |
| 1 | 1 | Pre-planning sprint 3 colaboración con los equipos de trabajo |  | 16h | 2018-05-21 09:00 | 2018-05-22 19:00 |  | 2d | 0d | start no earlier than 2018-05-21 09:00 | Diana Salazar | 16h |  |  |  |  |  |
| 2 | 2 | Revisión y seguimiento |  | 64h | 2018-05-23 09:00 | 2018-06-01 19:00 |  | 2d |  | start no earlier than 2018-05-23 09:00 | Christian Badillo [12.5%] | 8h |  |  |  |  |  |
| 3 | 3 | Creación del índice Test |  | 5h | 2018-05-22 09:00 | 2018-05-22 16:00 |  | 10.38d |  |  | Recurso 2 | 5h |  |  |  |  |  |
| 4 | 4 | Modificaciones a consultas de ofertas primera parte correspondientes a ofertas |  | 3h | 2018-05-23 09:00 | 2018-05-23 12:00 |  | 9.62d |  | start no earlier than 2018-05-23 09:00 | Diana Salazar | 3h | .6 horas | 1.5 | .3 horas | .45 horas | .15 horas |
| 5 | 5 | Modificación de consulta referente a los datos del cliente |  | 3h | 2018-05-22 09:00 | 2018-05-22 12:00 |  | 10.62d |  |  | Recurso 2 | 3h | .6 horas | 1.5 | .3 horas | .45 horas | .15 horas |
| 6 | 6 | Estimación de tiempo/esfuerzo para la solución larga |  | 3h | 2018-05-23 09:00 | 2018-05-23 12:00 |  | 9.62d |  | start no earlier than 2018-05-23 09:00 | Diana Salazar | 3h |  |  |  |  |  |
| 7 | 7 | Creación de esqueleto de consulta correspondiente al buzón de prospecto | manual | 5h | 2018-05-25 09:00 | 2018-05-25 16:00 |  |  |  |  | Recurso 2 | 5h | 1 hora | 2.5 horas | .5 horas | .75 horas | .25 horas |
| 8 | 8 | Modificación al índice de prospección |  | 16h | 2018-05-24 09:00 | 2018-05-25 19:00 |  | 7d |  | start no earlier than 2018-05-24 09:00 | Diana Salazar | 16h | 3.2 horas | 8 horas | 1.6 horas | 2.4 horas | .8 horas |
| 9 | 9 | Modificación al script de carga al índice |  | 16h | 2018-05-23 09:00 | 2018-05-24 19:00 | 1 | 2d | 0d | start no earlier than 2018-05-23 09:00 | Recurso 2 | 16h | 3.2 horas | 8 horas | 1.6 horas | 2.4 horas | .8 horas |
| 10 | 10 | Modificación de consultas donde se involucra el folio BPM | manual | 5h | 2018-05-30 09:00 | 2018-05-30 16:00 |  |  |  |  | Diana Salazar | 5h | 1 hora | 2.5 horas | .5 horas | .75 horas | .25 horas |
| 11 | 11 | Ejecución de carga al índice de prospección |  | 8h | 2018-05-25 09:00 | 2018-05-25 19:00 | 9 | 7d |  |  | Iván Ismael | 8h | 1.6 | 4 horas | .8 horas | 1.2 horas | .4 horas |
| 12 | 12 | **Módulo "Buzón de prospectos"** |  | 6d | 2018-05-28 09:00 | 2018-06-04 19:00 |  | 1d |  |  |  | 61h | 8 horas | 20 horas | 4 horas | 6 horas | 2 horas |
| 13 | 12.1 | Definición de búsquedas dinámicas |  | 16h | 2018-05-28 09:00 | 2018-05-29 19:00 | 8 | 5d |  | start no earlier than 2018-05-28 09:00 | Diana Salazar | 16h | 3.2 horas | 8 horas | 1.6 horas | 2.4 horas | .8 horas |
| 14 | 12.2 | Definición de query para buzón de prospectos |  | 16h | 2018-05-28 09:00 | 2018-05-29 19:00 | 9 | 1d |  | start no earlier than 2018-05-28 09:00 | Recurso 2 | 16h | 3.2 horas | 8 horas | 1.6 horas | 2.4 horas | .8 horas |
| 15 | 12.3 | Modificación de las actualizaciones ya entregadas debido a issues con el folio bpm | manual | 5h | 2018-05-30 09:00 | 2018-05-30 16:00 |  |  |  |  | Recurso 2 | 5h | 1 hora | 2.5 horas | .5 horas | .75 horas | .25 horas |
| 16 | 12.4 | Implementación de consulta de búsqueda de prospecto |  | 24h | 2018-05-31 09:00 | 2018-06-04 19:00 | 14 | 0d |  | start no earlier than 2018-05-31 09:00 | Diana Salazar | 24h | 4.8 horas | 12 horas | 3.6 horas | 3.6 horas | .12 hora |
| 17 | 13 | **Módulo "Subetapa en la que se encuentra el prospecto"** |  | 3d | 2018-05-31 09:00 | 2018-06-04 19:00 |  | 1d |  |  | Recurso 2 | 24h | 4.8 horas | 12 horas | 2.4 horas | 3.6 | .12 horas |
| 18 | 13.1 | Consulta cliente de bandera de carga |  | 8h | 2018-05-31 09:00 | 2018-05-31 19:00 |  | 1d | 0d | start no earlier than 2018-05-31 09:00 | Recurso 2 | 8h | 1.6 horas | 4 horas | .8 horas | 1.2 horas |  |
| 19 | 13.2 | Implementación de consulta de la información del cliente seleccionado con respecto a la subetapa |  | 16h | 2018-06-01 09:00 | 2018-06-04 19:00 | 18 | 1d |  |  | Recurso 2 | 16h | 3.2 horas | 8 horas | 1.6 horas | 2.4 horas |  |
| 20 | 14 | Documentación |  | 8h | 2018-06-05 09:00 | 2018-06-05 19:00 | 16 | 0d |  |  | Diana Salazar | 8h |  |  |  |  |  |
